# Projeto Algar · BCAPI / BC Billing

How a schedule from MS Project XML changed from version to version. A marks actual dates.

## Version 1 (saved 2026-10-13)

Note of the change: Publica a versão de leitura e o XML do MS Project; atualiza o README

| ID | WBS | Task | Duration | Start | Finish | Complete | Constraint |
| --- | --- | --- | --- | --- | --- | --- | --- |
| 1 | 1 | **Marco 0 — Kickoff** | 6d | 2026-10-02 | 2026-10-09 | 57% |  |
| 2 |  | Publicar painel e liberar usuarios para acompanhamento | 2d | 2026-10-06 A | 2026-10-07 | 50% | start no earlier than 2026-10-06 |
| 3 |  | Devolução da minuta contratual para Binario | 3d | 2026-10-06 A | 2026-10-08 | 50% | start no earlier than 2026-10-06 |
| 4 |  | Validação de Marcos, responsáveis e datas | 1d | 2026-10-07 A | 2026-10-07 | 50% | start no earlier than 2026-10-07 |
| 5 |  | Reunião de Kickoff 08/10 - 16h | 2d | 2026-10-07 A | 2026-10-08 A | 100% | start no earlier than 2026-10-07 |
| 6 |  | Definir pontos focais e cadência de acompanhamento | 2d | 2026-10-07 A | 2026-10-08 A | 100% | start no earlier than 2026-10-07 |
| 7 |  | Elaboração da TAP | 2d | 2026-10-08 A | 2026-10-09 | 50% | start no earlier than 2026-10-08 |
| 8 |  | Envio/Assinatura da TAP | 5d | 2026-10-02 | 2026-10-08 |  | start no earlier than 2026-10-02 |
| 9 | 2 | **Marco 1 — SSO no portal B2B** | 23d | 2026-09-29 | 2026-10-30 | 10% |  |
| 10 |  | Concluir a configuração de OpenID Connect, Keycloak e Keystone e trocar o acesso de sandbox pelo fluxo produtivo | 12d | 2026-10-05 | 2026-10-21 |  | start no earlier than 2026-10-05 |
| 11 |  | Incluir a URL do BCP no trusted dashboard da federação do Keystone (stage SP) para validar o SSO | 3d | 2026-10-07 A | 2026-10-09 | 50% | start no earlier than 2026-10-07 |
| 12 |  | Testar SSO no ambiente Sandbox | 9d | 2026-09-29 | 2026-10-09 |  | start no earlier than 2026-09-29 |
| 13 |  | Configurar Identity Provider e o mapping no Keystone | 1d | 2026-10-09 A | 2026-10-09 | 50% | start no earlier than 2026-10-09 |
| 14 |  | Validar os cenários de MFA, token expirado e usuário removido do grupo | 1d | 2026-10-23 | 2026-10-23 |  | start no earlier than 2026-10-23 |
| 15 |  | Liberar o acesso ao Mesa de TI e criar os usuários solicitados | 3d | 2026-10-07 | 2026-10-09 |  | start no earlier than 2026-10-07 |
| 16 |  | Criar App Registration no Azure , com redirect URIs de dev, hml e prod | 4d | 2026-10-08 | 2026-10-14 |  | start no earlier than 2026-10-08 |
| 17 |  | Consolidar a federação do Keystone nos templates do director (hoje feita à mão no stage) | 7d | 2026-10-13 A | 2026-10-21 | 50% | start no earlier than 2026-10-13 |
| 18 |  | Configurar o Identity Hub como provedor de identidade no Keystone de produção (São Paulo e Uberlândia) | 9d | 2026-10-13 | 2026-10-23 |  | start no earlier than 2026-10-13 |
| 19 |  | Definir as claims e grupos do Azure e o mapeamento para projeto e role no Keystone | 4d | 2026-10-14 | 2026-10-19 |  | start no earlier than 2026-10-14 |
| 20 |  | Ajuste do Backend do portal para o fluxo OIDC | 6d | 2026-10-15 | 2026-10-22 |  | start no earlier than 2026-10-15 |
| 21 |  | Mapping no Keystone | 4d | 2026-10-19 | 2026-10-22 |  | start no earlier than 2026-10-19 |
| 22 |  | Criar os usuários do Mesa de TI automaticamente via Blazon (até lá, a Binário cria sob demanda) | 6d | 2026-10-19 | 2026-10-26 |  | start no earlier than 2026-10-19 |
| 23 |  | Ajustar Frontend (botão de login com Microsoft, callback, mensagens de erro) | 5d | 2026-10-20 | 2026-10-26 |  | start no earlier than 2026-10-20 |
| 24 |  | Documentar e alinhar virada | 2d | 2026-10-29 | 2026-10-30 |  | start no earlier than 2026-10-29 |
| 25 | 3 | **Marco 2 — Redirect do BCP API para o Portal B2B** | 17d | 2026-10-07 | 2026-10-30 | 31% |  |
| 26 |  | Confirmar o sistema de destino | 3d | 2026-10-07 A | 2026-10-09 | 50% | start no earlier than 2026-10-07 |
| 27 |  | Configurar o redirect em produção | 3d | 2026-10-07 | 2026-10-09 |  | start no earlier than 2026-10-07 |
| 28 |  | Publicar o painel na porta 443 | 5d | 2026-10-07 A | 2026-10-14 | 50% | start no earlier than 2026-10-07 |
| 29 |  | Definir o fromato da URL e contexto assinado | 4d | 2026-10-08 A | 2026-10-14 | 50% | start no earlier than 2026-10-08 |
| 30 |  | Criar no Backend o Endpoint que recebe e valida | 5d | 2026-10-15 | 2026-10-21 |  | start no earlier than 2026-10-15 |
| 31 |  | Exibir botão de custo apenas para perfil financeiro do Cloud Plus | 5d | 2026-10-15 A | 2026-10-21 A | 100% | start no earlier than 2026-10-15 |
| 32 |  | Teste ponta a ponta | 4d | 2026-10-27 | 2026-10-30 |  | start no earlier than 2026-10-27 |
| 33 |  | Criar no front a rota que leva o usuário para a tela certa | 17d | 2026-10-07 | 2026-10-30 |  | start no earlier than 2026-10-07 |
| 34 | 4 | **Marco 3 — API e SKU e Flavors** | 17d | 2026-10-07 | 2026-10-30 | 5% |  |
| 35 |  | Envio do Link da documentação | 2d | 2026-10-07 | 2026-10-08 |  | start no earlier than 2026-10-07 |
| 36 |  | Levantamento necessidade de preço ou especificação | 2d | 2026-10-08 | 2026-10-09 |  | start no earlier than 2026-10-08 |
| 37 |  | Detalhar solicitações da API | 5d | 2026-10-08 A | 2026-10-15 | 50% | start no earlier than 2026-10-08 |
| 38 |  | Mapear de onde vêm os SKUs e como eles se ligam aos flavors do Nova | 3d | 2026-10-13 | 2026-10-15 |  | start no earlier than 2026-10-13 |
| 39 |  | Montar o contrato da API (OpenAPI) e validar com o consumidor | 3d | 2026-10-16 | 2026-10-20 |  | start no earlier than 2026-10-16 |
| 40 |  | Definir a autenticação da API | 3d | 2026-10-16 | 2026-10-20 |  | start no earlier than 2026-10-16 |
| 41 |  | Entendimento da demanda | 3d | 2026-10-16 | 2026-10-20 |  | start no earlier than 2026-10-16 |
| 42 |  | Implementar o endpoint com a transformação para o formato deles | 5d | 2026-10-21 | 2026-10-27 |  | start no earlier than 2026-10-21 |
| 43 |  | Teste, documentação e deploy | 3d | 2026-10-27 | 2026-10-29 |  | start no earlier than 2026-10-27 |
| 44 |  | Homologar | 2d | 2026-10-29 | 2026-10-30 |  | start no earlier than 2026-10-29 |
| 45 | 5 | **Marco 4 — Novas regiões** | 17d | 2026-10-05 | 2026-10-28 | 9% |  |
| 46 |  | Estimar esforço ampliação de casa decimal | 8d | 2026-10-05 A | 2026-10-15 | 50% | start no earlier than 2026-10-05 |
| 47 |  | Ajuste de casas decimais | 5d | 2026-10-05 | 2026-10-09 |  | start no earlier than 2026-10-05 |
| 48 |  | Restabelecer o staging de São Paulo | 9d | 2026-10-05 | 2026-10-16 |  | start no earlier than 2026-10-05 |
| 49 |  | Repassar informações e requisitos da solução para a operação | 9d | 2026-10-05 | 2026-10-16 |  | start no earlier than 2026-10-05 |
| 50 |  | Enviar as diretrizes de dimensionamento | 3d | 2026-10-07 A | 2026-10-09 A | 100% | start no earlier than 2026-10-07 |
| 51 |  | Definir o ambiente inicial da coleta Canonical: staging SP, Fortaleza ou Porto Alegre | 3d | 2026-10-07 | 2026-10-09 |  | start no earlier than 2026-10-07 |
| 52 |  | Definir a cobrança por roteador/projeto e por banda (avaliar aditivo contratual com Produtos) | 7d | 2026-10-07 | 2026-10-16 |  | start no earlier than 2026-10-07 |
| 53 |  | Começar coleta Fortaleza | 12d | 2026-10-07 | 2026-10-23 |  | start no earlier than 2026-10-07 |
| 54 |  | Deploy + Validação | 12d | 2026-10-07 | 2026-10-23 |  | start no earlier than 2026-10-07 |
| 55 |  | Começar coleta Porto Alegre | 12d | 2026-10-07 | 2026-10-23 |  | start no earlier than 2026-10-07 |
| 56 |  | Deploy + Validação | 12d | 2026-10-07 | 2026-10-23 |  | start no earlier than 2026-10-07 |
| 57 |  | Desabilitar o menu da calculadora da Binário na V1 ou apontá-lo para o endereço interno (VPN) | 4d | 2026-10-13 | 2026-10-16 |  | start no earlier than 2026-10-13 |
| 58 |  | Ajustar as VMs da POC para produção (nomes, rede, recursos e isolamento dos serviços) | 9d | 2026-10-13 | 2026-10-23 |  | start no earlier than 2026-10-13 |
| 59 |  | Gerar a chave privada e o CSR e emitir um único certificado para os dois domínios | 5d | 2026-10-15 | 2026-10-21 |  | start no earlier than 2026-10-15 |
| 60 |  | Criar o seletor de região no painel de consumo | 6d | 2026-10-19 | 2026-10-26 |  | start no earlier than 2026-10-19 |
| 61 |  | Liberar firewall e acesso externo conforme domínio e local de hospedagem | 6d | 2026-10-21 | 2026-10-28 |  | start no earlier than 2026-10-21 |
| 62 | 6 | **Marco 5 — Relatório de utilização de VMs** | 6d | 2026-10-02 | 2026-10-09 |  |  |
| 63 |  | Entender quais métricas, o agrupamento, a frequência e o formato do relatório | 6d | 2026-10-02 | 2026-10-09 |  | start no earlier than 2026-10-02 |
| 64 |  | Verificar Origem dos dados e histórico | 6d | 2026-10-02 | 2026-10-09 |  | start no earlier than 2026-10-02 |
| 65 |  | Montar um rascunho do relatório e validar | 6d | 2026-10-02 | 2026-10-09 |  | start no earlier than 2026-10-02 |
| 66 |  | Implementar a extração | 6d | 2026-10-02 | 2026-10-09 |  | start no earlier than 2026-10-02 |
| 67 |  | Automaticar a geração, se for recorrente. | 6d | 2026-10-02 | 2026-10-09 |  | start no earlier than 2026-10-02 |
| 68 | 7 | **Marco 6 — Alarmística de coleta + chamados Jira** | 17d | 2026-10-07 | 2026-10-30 | 6% |  |
| 69 |  | Avaliar a integração dos alertas com o Jira ou canal operacional equivalente (e-mail) | 5d | 2026-10-07 | 2026-10-14 |  | start no earlier than 2026-10-07 |
| 70 |  | Mitigação falha na coleta | 5d | 2026-10-08 A | 2026-10-15 | 50% | start no earlier than 2026-10-08 |

| ID | Task | Duration | Start | Finish | Constraint |
| --- | --- | --- | --- | --- | --- |
| 71 | Definir o que é falha de coleta (sem dados por X horas, erro de API, atraso de eventos) e a severidade de cada caso | 3d | 2026-10-13 | 2026-10-15 | start no earlier than 2026-10-13 |
| 72 | Levantar no Jira da Algar o projeto/fila, o tipo de chamado, os campos obrigatórios e a prioridade | 4d | 2026-10-13 | 2026-10-16 | start no earlier than 2026-10-13 |
| 73 | Liberar credencial e acesso à API do Jira para abertura automática de chamados | 2d | 2026-10-16 | 2026-10-19 | start no earlier than 2026-10-16 |
| 74 | Configurar o monitoramento da coleta por região (Uberlândia, São Paulo, Nordeste e Sul) | 5d | 2026-10-19 | 2026-10-23 | start no earlier than 2026-10-19 |
| 75 | Configurar o alarme e a integração que abre o chamado no Jira automaticamente | 4d | 2026-10-21 | 2026-10-26 | start no earlier than 2026-10-21 |
| 76 | Testar simulando uma parada da coleta (alarme disparado e chamado aberto no Jira) | 2d | 2026-10-27 | 2026-10-28 | start no earlier than 2026-10-27 |
| 77 | Documentar o fluxo de atendimento: quem recebe o chamado e o prazo por severidade (SLA da proposta) | 2d | 2026-10-29 | 2026-10-30 | start no earlier than 2026-10-29 |

## Version 2 (saved 2026-10-13)

Note of the change: Atualização completa com o ClickUp (13/10 20:51) e correção para marcos sem atividades

Last finish stays 2026-10-30. Complete tasks 4 → 9.

Added:

| ID | Task | Duration | Start | Finish | Constraint | Resources |
| --- | --- | --- | --- | --- | --- | --- |
| 26 | Criar no front o botão com a rota que leva o usuário para a tela certa | 17d | 2026-10-07 | 2026-10-30 | start no earlier than 2026-10-07 | Algar |
| 53 | Marco 5 — Relatório de utilização de VMs | 20d | 2026-10-02 | 2026-10-30 | start no earlier than 2026-10-02 |  |
| 55 | Marco 6 — Alarmística de coleta + chamados Jira | 17d | 2026-10-07 | 2026-10-30 | start no earlier than 2026-10-07 |  |

Removed: 20 Ajuste do Backend do portal para o fluxo OIDC; 21 Mapping no Keystone; 22 Criar os usuários do Mesa de TI automaticamente via Blazon (até lá, a Binário cria sob demanda); 24 Documentar e alinhar virada; 27 Configurar o redirect em produção; 29 Definir o fromato da URL e contexto assinado; 30 Criar no Backend o Endpoint que recebe e valida; 33 Criar no front a rota que leva o usuário para a tela certa; 46 Estimar esforço ampliação de casa decimal; 48 Restabelecer o staging de São Paulo; 49 Repassar informações e requisitos da solução para a operação; 63 Entender quais métricas, o agrupamento, a frequência e o formato do relatório; 64 Verificar Origem dos dados e histórico; 65 Montar um rascunho do relatório e validar; 66 Implementar a extração; 67 Automaticar a geração, se for recorrente.; 69 Avaliar a integração dos alertas com o Jira ou canal operacional equivalente (e-mail); 70 Mitigação falha na coleta; 71 Definir o que é falha de coleta (sem dados por X horas, erro de API, atraso de eventos) e a severidade de cada caso; 72 Levantar no Jira da Algar o projeto/fila, o tipo de chamado, os campos obrigatórios e a prioridade; 73 Liberar credencial e acesso à API do Jira para abertura automática de chamados; 74 Configurar o monitoramento da coleta por região (Uberlândia, São Paulo, Nordeste e Sul); 75 Configurar o alarme e a integração que abre o chamado no Jira automaticamente; 76 Testar simulando uma parada da coleta (alarme disparado e chamado aberto no Jira); 77 Documentar o fluxo de atendimento: quem recebe o chamado e o prazo por severidade (SLA da proposta)

Changed:

| ID | Task | Start | Finish | Duration | Complete | Other |
| --- | --- | --- | --- | --- | --- | --- |
| 1 | **Marco 0 — Kickoff** |  | 2026-10-09 → 2026-10-16 (+7d) | 6d → 10d | 57% → 71% |  |
| 2 | Devolução da minuta contratual para Binario |  | 2026-10-08 → 2026-10-09 (+1d) | 3d → 4d |  |  |
| 3 | Publicar painel e liberar usuarios para acompanhamento |  | 2026-10-07 → 2026-10-16 A (+9d) | 2d → 8d | 50% → 100% |  |
| 6 | Validação de Marcos, responsáveis e datas |  | 2026-10-07 → 2026-10-16 A (+9d) | 1d → 7d | 50% → 100% |  |
| 7 | Elaboração da TAP |  | 2026-10-09 → 2026-10-16 (+7d) | 2d → 6d |  |  |
| 8 | Envio/Assinatura da TAP |  | 2026-10-08 → 2026-10-16 (+8d) | 5d → 10d |  |  |
| 9 | **Marco 1 — SSO no portal B2B** |  |  |  | 10% → 30% |  |
| 11 | Incluir a URL do BCP no trusted dashboard da federação do Keystone (stage SP) para validar o SSO |  | 2026-10-09 → 2026-10-16 A (+7d) | 3d → 7d | 50% → 100% |  |
| 12 | Testar SSO no ambiente Sandbox | 2026-09-29 A | 2026-10-09 → 2026-10-16 (+7d) | 9d → 13d | 0% → 50% |  |
| 13 | Configurar Identity Provider e o mapping no Keystone |  |  |  |  | resources Binário Cloud → Algar |
| 14 | Validar os cenários de MFA, token expirado e usuário removido do grupo | 2026-10-23 A |  |  | 0% → 50% |  |
| 15 | Consolidar a federação do Keystone nos templates do director | 2026-10-07 → 2026-10-13 A (+6d) | 2026-10-09 → 2026-10-21 (+12d) | 3d → 7d | 0% → 50% | was named Liberar o acesso ao Mesa de TI e criar os usuários solicitados; constraint start no earlier than 2026-10-07 → start no earlier than 2026-10-13; resources none → Algar |
| 16 | Documentar e alinhar virada para produção | 2026-10-08 → 2026-10-29 (+21d) | 2026-10-14 → 2026-10-30 (+16d) | 4d → 2d |  | was named Criar App Registration no Azure , com redirect URIs de dev, hml e prod; constraint start no earlier than 2026-10-08 → start no earlier than 2026-10-29 |
| 17 | Ajustes Mesa TI | 2026-10-13 A → 2026-10-02 (-11d) | 2026-10-21 → 2026-10-30 (+9d) | 7d → 20d | 50% → 0% | was named Consolidar a federação do Keystone nos templates do director (hoje feita à mão no stage); constraint start no earlier than 2026-10-13 → start no earlier than 2026-10-02; resources Algar → Binário Cloud |
| 18 | Levantamento de autenticação | 2026-10-13 → 2026-10-02 (-11d) | 2026-10-23 → 2026-10-30 (+7d) | 9d → 20d |  | was named Configurar o Identity Hub como provedor de identidade no Keystone de produção (São Paulo e Uberlândia); constraint start no earlier than 2026-10-13 → start no earlier than 2026-10-02; resources none → Algar |
| 19 | Liberar Usuario | 2026-10-14 → 2026-10-02 (-12d) | 2026-10-19 → 2026-10-30 (+11d) | 4d → 20d |  | was named Definir as claims e grupos do Azure e o mapeamento para projeto e role no Keystone; constraint start no earlier than 2026-10-14 → start no earlier than 2026-10-02 |
| 20 | **Marco 2 — Redirect do BCP API para o Portal B2B** |  |  |  | 31% → 33% |  |
| 21 | Confirmar o sistema de destino |  | 2026-10-09 A |  | 50% → 100% |  |
| 22 | Publicar o painel na porta 443 | 2026-10-07 A → 2026-10-07 |  |  | 50% → 0% | resources Binário Cloud → Algar |
| 23 | Configurar a URL em redirect para produção | 2026-10-20 → 2026-10-13 (-7d) | 2026-10-26 → 2026-10-14 (-12d) | 5d → 2d |  | was named Ajustar Frontend (botão de login com Microsoft, callback, mensagens de erro); constraint start no earlier than 2026-10-20 → start no earlier than 2026-10-13 |
| 28 | Envio do Link da documentação |  | 2026-10-08 → 2026-10-16 (+8d) | 2d → 7d |  | resources none → Binário Cloud |
| 30 | Levantamento necessidade de preço ou especificação |  | 2026-10-09 → 2026-10-16 (+7d) | 2d → 6d |  |  |
| 38 | **Marco 4 — Novas regiões** |  |  |  | 9% → 19% |  |
| 39 | Ajuste de casas decimais | 2026-10-05 A | 2026-10-09 → 2026-10-15 (+6d) | 5d → 8d | 0% → 50% |  |
| 41 | Definir o ambiente inicial da coleta Canonical: staging SP, Fortaleza ou Porto Alegre |  | 2026-10-09 → 2026-10-16 (+7d) | 3d → 7d |  | resources none → Algar |
| 42 | Definir a cobrança por roteador/projeto e por banda (avaliar aditivo contratual com Produtos) |  |  |  |  | resources none → Algar |
| 47 | Desabilitar o menu da calculadora da Binário na V1 ou apontá-lo para o endereço interno (VPN) |  |  |  |  | resources none → Binário Cloud |
| 48 | Ajustar as VMs da POC para produção (nomes, rede, recursos e isolamento dos serviços) |  |  |  |  | resources none → Algar |
| 49 | Gerar a chave privada e o CSR e emitir um único certificado para os dois domínios |  |  |  |  | resources none → Algar |
| 50 | Criar o seletor de região no painel de consumo | 2026-10-19 A | 2026-10-26 A |  | 0% → 100% |  |
| 51 | Liberar firewall e acesso externo conforme domínio e local de hospedagem |  |  |  |  | resources none → Algar |
| 52 | **Marco 5 — Relatório de utilização de VMs** |  | 2026-10-09 → 2026-10-30 (+21d) | 6d → 20d |  |  |
| 54 | **Marco 6 — Alarmística de coleta + chamados Jira** |  |  |  | 6% → 0% |  |

## Version 3 (saved 2026-10-14)

Note of the change: Data da última atualização (14/10/2026 20:32) [CF-Pages-Skip]

Last finish stays 2026-10-30.

Changed:

| ID | Task | Start | Finish | Duration | Complete | Other |
| --- | --- | --- | --- | --- | --- | --- |
| 7 | Devolução da minuta contratual para Binario | 2026-10-06 A → 2026-10-16 A (+10d) | 2026-10-09 → 2026-10-16 (+7d) | 4d → 1d |  | constraint start no earlier than 2026-10-06 → start no earlier than 2026-10-16 |
| 9 | **Marco 1 — SSO no portal B2B** | 2026-09-29 → 2026-10-02 (+3d) |  | 23d → 20d |  |  |
| 12 | Testar SSO no ambiente Sandbox | 2026-09-29 A → 2026-10-06 A (+7d) | 2026-10-16 → 2026-10-23 (+7d) |  |  | constraint start no earlier than 2026-09-29 → start no earlier than 2026-10-06 |
| 13 | Configurar Identity Provider e o mapping no Keystone | 2026-10-09 A → 2026-10-16 A (+7d) | 2026-10-09 → 2026-10-16 (+7d) |  |  | constraint start no earlier than 2026-10-09 → start no earlier than 2026-10-16 |
| 14 | Validar os cenários de MFA, token expirado e usuário removido do grupo | 2026-10-23 A → 2026-10-30 A (+7d) | 2026-10-23 → 2026-10-30 (+7d) |  |  | constraint start no earlier than 2026-10-23 → start no earlier than 2026-10-30 |
| 38 | **Marco 4 — Novas regiões** |  |  |  | 19% → 21% |  |
| 39 | Ajuste de casas decimais |  |  |  | 50% → 75% |  |

## Version 4 (saved 2026-10-15)

Note of the change: Data da última atualização (15/10/2026 20:30) [CF-Pages-Skip]

Last finish stays 2026-10-30. Complete tasks 9 → 11.

Changed:

| ID | Task | Start | Finish | Duration | Complete | Other |
| --- | --- | --- | --- | --- | --- | --- |
| 1 | **Marco 0 — Kickoff** | 2026-10-02 → 2026-10-06 (+4d) |  | 10d → 8d | 71% → 82% |  |
| 6 | Elaboração da TAP |  | 2026-10-16 A |  | 50% → 100% |  |
| 7 | Envio/Assinatura da TAP | 2026-10-02 → 2026-10-15 A (+13d) |  | 10d → 2d | 0% → 25% | constraint start no earlier than 2026-10-02 → start no earlier than 2026-10-15 |
| 38 | **Marco 4 — Novas regiões** |  |  |  | 21% → 23% |  |
| 39 | Ajuste de casas decimais |  | 2026-10-15 A |  | 75% → 100% |  |

## Version 5 (saved 2026-10-19)

Note of the change: Data da última atualização (19/10/2026 20:32) [CF-Pages-Skip]

Last finish stays 2026-10-30.

Changed:

| ID | Task | Finish | Duration |
| --- | --- | --- | --- |
| 1 | **Marco 0 — Kickoff** | 2026-10-16 → 2026-10-23 (+7d) | 8d → 13d |
| 7 | Envio/Assinatura da TAP | 2026-10-16 → 2026-10-23 (+7d) | 2d → 7d |

## Version 6 (saved 2026-10-20)

Note of the change: Data da última atualização (20/10/2026 20:32) [CF-Pages-Skip]

Last finish stays 2026-10-30.

Added:

| ID | Task | Duration | Start | Finish | Constraint | Resources |
| --- | --- | --- | --- | --- | --- | --- |
| 11 | Envio de credenciais | 3d | 2026-10-16 | 2026-10-20 | start no earlier than 2026-10-16 | Algar |
| 17 | Provisionamento 2 VMs para produção | 3d | 2026-10-19 A | 2026-10-21 | start no earlier than 2026-10-19 | Algar |

Changed:

| ID | Task | Start | Complete |
| --- | --- | --- | --- |
| 9 | **Marco 1 — SSO no portal B2B** |  | 30% → 31% |
| 10 | Concluir a configuração de OpenID Connect, Keycloak e Keystone e trocar o acesso de sandbox pelo fluxo produtivo | 2026-10-05 A | 0% → 25% |

## Version 7 (saved 2026-10-22)

Note of the change: Sincronização automática com o ClickUp (22/10/2026 20:27)

Last finish stays 2026-10-30.

Added:

| ID | Task | Duration | Start | Finish | Constraint | Resources |
| --- | --- | --- | --- | --- | --- | --- |
| 12 | Envio de credenciais de produção | 3d | 2026-10-16 A | 2026-10-20 | start no earlier than 2026-10-16 | Algar |
| 13 | Criação de usuário de serviço | 2d | 2026-10-22 A | 2026-10-23 | start no earlier than 2026-10-22 | Algar |
| 20 | Ajustes da nomeclatura dos hosts | 3d | 2026-10-22 A | 2026-10-26 | start no earlier than 2026-10-22 | Algar |
| 22 | Verificar com fornecedor Blazon | 3d | 2026-10-22 A | 2026-10-26 | start no earlier than 2026-10-22 | Algar |

Removed: 28 Criar no front o botão com a rota que leva o usuário para a tela certa; 31 Detalhar solicitações da API; 33 Mapear de onde vêm os SKUs e como eles se ligam aos flavors do Nova; 34 Definir a autenticação da API; 35 Entendimento da demanda; 36 Montar o contrato da API (OpenAPI) e validar com o consumidor

Changed:

| ID | Task | Start | Finish | Duration | Complete | Other |
| --- | --- | --- | --- | --- | --- | --- |
| 9 | **Marco 1 — SSO no portal B2B** | 2026-10-02 → 2026-10-05 (+3d) |  | 20d → 19d | 31% → 36% |  |
| 10 | Concluir a configuração de OpenID Connect, Keycloak e Keystone e trocar o acesso de sandbox pelo fluxo produtivo | 2026-10-05 A → 2026-10-05 |  |  | 25% → 0% |  |
| 11 | Envio JWT | 2026-10-16 → 2026-10-15 A (-1d) | 2026-10-20 → 2026-10-22 (+2d) | 3d → 6d | 0% → 25% | was named Envio de credenciais; constraint start no earlier than 2026-10-16 → start no earlier than 2026-10-15 |
| 21 | Ajustes Mesa TI | 2026-10-02 → 2026-10-22 A (+20d) |  | 20d → 7d | 0% → 50% | constraint start no earlier than 2026-10-02 → start no earlier than 2026-10-22 |
| 23 | Liberar Usuario | 2026-10-02 → 2026-10-22 (+20d) |  | 20d → 7d |  | constraint start no earlier than 2026-10-02 → start no earlier than 2026-10-22 |
| 24 | Levantamento de autenticação | 2026-10-02 → 2026-10-22 (+20d) |  | 20d → 7d |  | constraint start no earlier than 2026-10-02 → start no earlier than 2026-10-22 |
| 26 | **Marco 2 — Redirect do BCP API para o Portal B2B** |  |  |  | 33% → 40% |  |
| 32 | **Marco 3 — API e SKU e Flavors** |  |  |  | 5% → 0% |  |
| 38 | **Marco 4 — Novas regiões** |  | 2026-10-28 → 2026-10-30 (+2d) | 17d → 19d |  |  |
| 48 | Começar coleta Porto Alegre | 2026-10-07 → 2026-10-22 (+15d) | 2026-10-23 → 2026-10-30 (+7d) | 12d → 7d |  | constraint start no earlier than 2026-10-07 → start no earlier than 2026-10-22 |
| 49 | Deploy + Validação | 2026-10-07 → 2026-10-22 (+15d) | 2026-10-23 → 2026-10-30 (+7d) | 12d → 7d |  | constraint start no earlier than 2026-10-07 → start no earlier than 2026-10-22 |
| 50 | Começar coleta Fortaleza | 2026-10-07 → 2026-10-22 (+15d) | 2026-10-23 → 2026-10-30 (+7d) | 12d → 7d |  | constraint start no earlier than 2026-10-07 → start no earlier than 2026-10-22 |
| 51 | Deploy + Validação | 2026-10-07 → 2026-10-22 (+15d) | 2026-10-23 → 2026-10-30 (+7d) | 12d → 7d |  | constraint start no earlier than 2026-10-07 → start no earlier than 2026-10-22 |

## Version 8 (saved 2026-10-23)

Note of the change: Data da última atualização (23/10/2026 20:32) [CF-Pages-Skip]

Last finish stays 2026-10-30. Complete tasks 11 → 14.

Changed:

| ID | Task | Finish | Complete |
| --- | --- | --- | --- |
| 1 | **Marco 0 — Kickoff** |  | 82% → 93% |
| 7 | Envio/Assinatura da TAP | 2026-10-23 A | 25% → 100% |
| 9 | **Marco 1 — SSO no portal B2B** |  | 36% → 42% |
| 19 | Provisionamento 2 VMs para produção | 2026-10-21 A | 50% → 100% |
| 20 | Ajustes da nomeclatura dos hosts | 2026-10-26 A | 50% → 100% |

## Version 9 (saved 2026-10-29)

Note of the change: Data da última atualização (29/10/2026 20:32) [CF-Pages-Skip]

Last finish stays 2026-10-30. Complete tasks 14 → 17.

Changed:

| ID | Task | Start | Finish | Complete |
| --- | --- | --- | --- | --- |
| 9 | **Marco 1 — SSO no portal B2B** |  |  | 42% → 47% |
| 11 | Envio JWT |  | 2026-10-22 A | 25% → 100% |
| 12 | Envio de credenciais de produção |  | 2026-10-20 A | 25% → 100% |
| 21 | Ajustes Mesa TI | 2026-10-22 A → 2026-10-22 |  | 50% → 0% |
| 22 | Verificar com fornecedor Blazon |  |  | 50% → 25% |
| 38 | **Marco 4 — Novas regiões** |  |  | 23% → 31% |
| 44 | Ajustar as VMs da POC para produção (nomes, rede, recursos e isolamento dos serviços) | 2026-10-13 A | 2026-10-23 A | 0% → 100% |

## Version 10 (saved 2026-10-30)

Note of the change: Data da última atualização (30/10/2026 20:29) [CF-Pages-Skip]

Last finish 2026-10-30 → 2026-11-13 (+14d). Complete tasks 17 → 19.

Added:

| ID | Task | Duration | Start | Finish | Constraint | Resources |
| --- | --- | --- | --- | --- | --- | --- |
| 16 | Validar SSO em ambiente produtivo/região integrada | 3d | 2026-11-04 A | 2026-11-06 | start no earlier than 2026-11-04 | Binário Cloud |
| 27 | Publicar e validar acesso HTTPS/443 do BCP em produção | 25d | 2026-10-07 | 2026-11-12 | start no earlier than 2026-10-07 | Algar |
| 30 | Configurar redirect do Portal B2B para o BCP em produção | 10d | 2026-10-29 | 2026-11-12 | start no earlier than 2026-10-29 | Algar |
| 33 | Validar requisitos de SKU, Flavor e precificação | 6d | 2026-10-08 A | 2026-10-16 A | start no earlier than 2026-10-08 | Binário Cloud |
| 40 | Validar regras de cobrança das novas regiões | 24d | 2026-10-07 | 2026-11-11 | start no earlier than 2026-10-07 | Algar |
| 50 | Liberar acesso externo ao MySQL para a BC Data API | 4d | 2026-10-29 A | 2026-11-04 | start no earlier than 2026-10-29 | Algar |
| 51 | Apresentar calculadora ao time do Portal | 6d | 2026-10-29 | 2026-11-06 | start no earlier than 2026-10-29 | Binário Cloud |
| 56 | Validar endpoint Fortaleza; | 3d | 2026-10-30 | 2026-11-04 | start no earlier than 2026-10-30 | Binário Cloud |
| 57 | Validar conectividade BC Data API → MySQL | 3d | 2026-11-04 | 2026-11-06 | start no earlier than 2026-11-04 | Binário Cloud |

Removed: 15 Testar SSO no ambiente Sandbox; 24 Levantamento de autenticação; 28 Publicar o painel na porta 443; 31 Teste ponta a ponta; 38 Marco 4 — Novas regiões; 41 Definir a cobrança por roteador/projeto e por banda (avaliar aditivo contratual com Produtos); 45 Gerar a chave privada e o CSR e emitir um único certificado para os dois domínios

Changed:

| ID | Task | Start | Finish | Duration | Complete | Other |
| --- | --- | --- | --- | --- | --- | --- |
| 1 | **Marco 0 — Kickoff** |  | 2026-10-23 → 2026-11-06 (+14d) | 13d → 22d |  |  |
| 8 | Negociação minuta contratual Binario x Algar |  | 2026-10-16 → 2026-11-06 (+21d) | 1d → 15d |  | was named Devolução da minuta contratual para Binario |
| 9 | **Marco 1 — Fase 1 — SSO / Identity Hub / Portal B2B** |  | 2026-10-30 → 2026-11-13 (+14d) | 19d → 28d | 47% → 56% | was named Marco 1 — SSO no portal B2B |
| 10 | Concluir a configuração de OpenID Connect, Keycloak e Keystone e trocar o acesso de sandbox pelo fluxo produtivo |  | 2026-10-21 → 2026-11-04 (+14d) | 12d → 21d |  |  |
| 13 | Disponibilizar usuários de serviço das regiões produtivas |  | 2026-10-23 → 2026-11-04 (+12d) | 2d → 9d |  | was named Criação de usuário de serviço |
| 15 | Configurar Identity Provider e o mapping no Keystone |  | 2026-10-16 → 2026-11-04 (+19d) | 1d → 13d |  |  |
| 17 | Validar cenários de segurança do SSO | 2026-10-30 A → 2026-11-04 A (+5d) | 2026-10-30 → 2026-11-06 (+7d) | 1d → 3d |  | was named Validar os cenários de MFA, token expirado e usuário removido do grupo; constraint start no earlier than 2026-10-30 → start no earlier than 2026-11-04 |
| 18 | Consolidar a federação do Keystone nos templates do director |  | 2026-10-21 → 2026-11-11 (+21d) | 7d → 21d |  |  |
| 21 | Ajustes Mesa TI | 2026-10-22 → 2026-10-30 A (+8d) | 2026-10-30 → 2026-11-13 (+14d) | 7d → 10d | 0% → 50% | constraint start no earlier than 2026-10-22 → start no earlier than 2026-10-30 |
| 22 | Definir fluxo de autenticação do Mesa TI via Blazon |  | 2026-10-26 → 2026-11-03 (+8d) | 3d → 8d | 25% → 50% | was named Verificar com fornecedor Blazon |
| 23 | Liberar acesso dos usuários do Mesa TI | 2026-10-22 A | 2026-10-30 → 2026-11-09 (+10d) | 7d → 12d | 0% → 10% | was named Liberar Usuario |
| 24 | Documentar e alinhar virada para produção | 2026-10-29 → 2026-11-11 (+13d) | 2026-10-30 → 2026-11-13 (+14d) | 2d → 3d |  | constraint start no earlier than 2026-10-29 → start no earlier than 2026-11-11 |
| 25 | **Marco 2 — Redirect do BCP API para o Portal B2B** |  | 2026-10-30 → 2026-11-13 (+14d) | 17d → 26d |  |  |
| 29 | Validar fluxo Portal B2B → SSO → BCP em produção | 2026-10-13 → 2026-10-27 (+14d) | 2026-10-14 → 2026-11-13 (+30d) | 2d → 13d |  | was named Configurar a URL em redirect para produção; constraint start no earlier than 2026-10-13 → start no earlier than 2026-10-27; resources Algar → Binário Cloud |
| 31 | **Marco 3 — API e SKU e Flavors** |  | 2026-10-30 → 2026-11-11 (+12d) | 17d → 24d | 0% → 50% |  |
| 32 | Envio do Link da documentação | 2026-10-07 A | 2026-10-16 A |  | 0% → 100% |  |
| 34 | Concluir adequação dos endpoints de SKU e Flavor | 2026-10-08 → 2026-10-21 A (+13d) | 2026-10-16 → 2026-11-06 (+21d) | 6d → 12d | 0% → 50% | was named Levantamento necessidade de preço ou especificação; constraint start no earlier than 2026-10-08 → start no earlier than 2026-10-21 |
| 35 | Testar e publicar APIs de SKU e Flavor | 2026-10-21 → 2026-10-27 (+6d) | 2026-10-27 → 2026-11-09 (+13d) | 5d → 9d |  | was named Implementar o endpoint com a transformação para o formato deles; constraint start no earlier than 2026-10-21 → start no earlier than 2026-10-27 |
| 36 | Homologar APIs de SKU e Flavor com a Algar | 2026-10-27 → 2026-10-29 (+2d) | 2026-10-29 → 2026-11-11 (+13d) | 3d → 9d |  | was named Teste, documentação e deploy; constraint start no earlier than 2026-10-27 → start no earlier than 2026-10-29; resources Binário Cloud → Binário Cloud; Algar |
| 37 | **Marco 4 — Novas regiões / Coleta / Billing** | 2026-10-29 → 2026-10-05 (-24d) | 2026-10-30 → 2026-11-13 (+14d) | 2d → 28d | 0% → 25% | was named Homologar; constraint start no earlier than 2026-10-29 → none; resources Binário Cloud; Algar → none |
| 42 | Definir publicação e acesso da calculadora de consumo | 2026-10-07 → 2026-10-13 (+6d) | 2026-10-16 → 2026-11-12 (+27d) | 7d → 22d |  | was named Definir o ambiente inicial da coleta Canonical: staging SP, Fortaleza ou Porto Alegre; constraint start no earlier than 2026-10-07 → start no earlier than 2026-10-13; resources Algar → Binário Cloud |
| 43 | Validar certificado e HTTPS do ambiente produtivo | 2026-10-13 → 2026-10-15 (+2d) | 2026-10-16 → 2026-11-06 (+21d) | 4d → 16d |  | was named Desabilitar o menu da calculadora da Binário na V1 ou apontá-lo para o endereço interno (VPN); constraint start no earlier than 2026-10-13 → start no earlier than 2026-10-15; resources Binário Cloud → Algar |
| 45 | Liberar firewall e acesso externo conforme domínio e local de hospedagem |  | 2026-10-28 → 2026-11-06 (+9d) | 6d → 12d |  |  |
| 46 | Começar coleta Porto Alegre |  | 2026-10-30 → 2026-11-13 (+14d) | 7d → 16d |  |  |
| 47 | Deploy + Validação |  | 2026-10-30 → 2026-11-13 (+14d) | 7d → 16d |  |  |
| 48 | Começar coleta Fortaleza |  | 2026-10-30 → 2026-11-13 (+14d) | 7d → 16d |  |  |
| 49 | Deploy + Validação |  | 2026-10-30 → 2026-11-13 (+14d) | 7d → 16d |  |  |
| 52 | Validar acessos e endpoints das regiões Canonical | 2026-10-02 → 2026-10-30 A (+28d) | 2026-10-30 → 2026-11-04 (+5d) | 20d → 3d | 0% → 50% | was named Marco 5 — Relatório de utilização de VMs; constraint none → start no earlier than 2026-10-30; resources none → Binário Cloud; Algar |
| 53 | Validar endpoint São Paulo DR; | 2026-10-02 → 2026-10-30 (+28d) | 2026-10-30 → 2026-11-04 (+5d) | 20d → 3d |  | was named Marco 5 — Relatório de utilização de VMs; constraint start no earlier than 2026-10-02 → start no earlier than 2026-10-30; resources none → Binário Cloud |
| 54 | Validar endpoint São Paulo; | 2026-10-07 → 2026-10-30 (+23d) | 2026-10-30 → 2026-11-04 (+5d) | 17d → 3d |  | was named Marco 6 — Alarmística de coleta + chamados Jira; constraint none → start no earlier than 2026-10-30; resources none → Binário Cloud |
| 55 | Validar Endpoint Porto Alegre; | 2026-10-07 → 2026-10-30 (+23d) | 2026-10-30 → 2026-11-04 (+5d) | 17d → 3d |  | was named Marco 6 — Alarmística de coleta + chamados Jira; constraint start no earlier than 2026-10-07 → start no earlier than 2026-10-30; resources none → Binário Cloud |

## Version 11 (saved 2026-11-03)

Note of the change: Data da última atualização (03/11/2026 20:32) [CF-Pages-Skip]

Last finish stays 2026-11-13. Complete tasks 19 → 20.

Changed:

| ID | Task | Finish | Complete |
| --- | --- | --- | --- |
| 9 | **Marco 1 — Fase 1 — SSO / Identity Hub / Portal B2B** |  | 56% → 62% |
| 22 | Definir fluxo de autenticação do Mesa TI via Blazon | 2026-11-03 A | 50% → 100% |
| 23 | Liberar acesso dos usuários do Mesa TI |  | 10% → 50% |

## Version 12 (saved 2026-11-04)

Note of the change: Data da última atualização (04/11/2026 20:32) [CF-Pages-Skip]

Last finish stays 2026-11-13.

Changed:

| ID | Task | Start | Complete |
| --- | --- | --- | --- |
| 37 | **Marco 4 — Novas regiões / Coleta / Billing** |  | 25% → 32% |
| 55 | Validar Endpoint Porto Alegre; | 2026-10-30 A | 0% → 75% |
| 56 | Validar endpoint Fortaleza; | 2026-10-30 A | 0% → 75% |

## Version 13 (saved 2026-11-05)

Note of the change: Data da última atualização (05/11/2026 20:32) [CF-Pages-Skip]

Last finish stays 2026-11-13. Complete tasks 20 → 21.

Added:

| ID | Task | Duration | Start | Finish | Constraint | Resources |
| --- | --- | --- | --- | --- | --- | --- |
| 37 | Coleta de SKU/recursos não mapeados | 6d | 2026-11-04 A | 2026-11-11 | start no earlier than 2026-11-04 | Binário Cloud |
| 38 | Snapshot | 6d | 2026-11-04 | 2026-11-11 | start no earlier than 2026-11-04 | Binário Cloud |

Changed:

| ID | Task | Start | Finish | Duration | Complete | Other |
| --- | --- | --- | --- | --- | --- | --- |
| 9 | **Marco 1 — Fase 1 — SSO / Identity Hub / Portal B2B** |  |  |  | 62% → 70% |  |
| 10 | Concluir a configuração de OpenID Connect, Keycloak e Keystone e trocar o acesso de sandbox pelo fluxo produtivo | 2026-10-05 A | 2026-11-04 → 2026-11-06 (+2d) | 21d → 23d | 0% → 50% |  |
| 13 | Disponibilizar usuários de serviço das regiões produtivas |  | 2026-11-04 A |  | 25% → 100% |  |
| 15 | Configurar Identity Provider e o mapping no Keystone |  | 2026-11-04 → 2026-11-11 (+7d) | 13d → 18d |  |  |
| 16 | Validar SSO em ambiente produtivo/região integrada | 2026-11-04 A → 2026-11-11 A (+7d) | 2026-11-06 → 2026-11-12 (+6d) | 3d → 2d |  | constraint start no earlier than 2026-11-04 → start no earlier than 2026-11-11 |
| 17 | Validar cenários de segurança do SSO | 2026-11-04 A → 2026-11-11 A (+7d) | 2026-11-06 → 2026-11-12 (+6d) | 3d → 2d |  | constraint start no earlier than 2026-11-04 → start no earlier than 2026-11-11 |
| 31 | **Marco 3 — API e SKU e Flavors** |  |  |  | 50% → 43% |  |
| 53 | Liberar acesso externo ao MySQL para a BC Data API |  | 2026-11-04 → 2026-11-12 (+8d) | 4d → 10d |  |  |
| 54 | Validar acessos e endpoints das regiões Canonical |  | 2026-11-04 → 2026-11-12 (+8d) | 3d → 9d |  |  |

## Version 14 (saved 2026-11-11)

Note of the change: Data da última atualização (11/11/2026 20:32) [CF-Pages-Skip]

Last finish 2026-11-13 → 2026-12-04 (+21d). Complete tasks 21 → 22.

Added:

| ID | Task | Duration | Start | Finish | Constraint | Resources |
| --- | --- | --- | --- | --- | --- | --- |
| 24 | Aguardando retorno técnico Blazon | 3d | 2026-11-11 | 2026-11-13 | start no earlier than 2026-11-11 | Algar |

Changed:

| ID | Task | Start | Finish | Duration | Complete | Other |
| --- | --- | --- | --- | --- | --- | --- |
| 1 | **Marco 0 — Kickoff** |  |  |  | 93% → 100% |  |
| 8 | Negociação minuta contratual Binario x Algar |  | 2026-11-06 A |  | 50% → 100% |  |
| 9 | **Marco 1 — Fase 1 — SSO / Identity Hub / Portal B2B** |  | 2026-11-13 → 2026-11-27 (+14d) | 28d → 37d | 70% → 62% |  |
| 10 | Concluir a configuração de OpenID Connect, Keycloak e Keystone e trocar o acesso de sandbox pelo fluxo produtivo |  | 2026-11-06 → 2026-11-13 (+7d) | 23d → 28d |  |  |
| 15 | Configurar Identity Provider e o mapping no Keystone |  | 2026-11-11 → 2026-11-13 (+2d) | 18d → 20d |  |  |
| 16 | Validar SSO em ambiente produtivo/região integrada | 2026-11-11 A → 2026-11-13 A (+2d) | 2026-11-12 → 2026-11-27 (+15d) | 2d → 10d |  | constraint start no earlier than 2026-11-11 → start no earlier than 2026-11-13 |
| 17 | Validar cenários de segurança do SSO | 2026-11-11 A → 2026-11-13 A (+2d) | 2026-11-12 → 2026-11-27 (+15d) | 2d → 10d |  | constraint start no earlier than 2026-11-11 → start no earlier than 2026-11-13 |
| 18 | Consolidar a federação do Keystone nos templates do director |  | 2026-11-11 → 2026-11-13 (+2d) | 21d → 23d |  |  |
| 23 | Liberar acesso dos usuários do Mesa TI | 2026-10-22 A → 2026-10-22 | 2026-11-09 → 2026-11-13 (+4d) | 12d → 16d | 50% → 0% |  |
| 25 | Documentar e alinhar virada para produção |  | 2026-11-13 → 2026-11-27 (+14d) | 3d → 12d |  |  |
| 26 | **Marco 2 — Redirect do BCP API para o Portal B2B** |  | 2026-11-13 → 2026-12-04 (+21d) | 26d → 40d |  |  |
| 28 | Publicar e validar acesso HTTPS/443 do BCP em produção |  | 2026-11-12 → 2026-12-04 (+22d) | 25d → 40d |  |  |
| 30 | Validar fluxo Portal B2B → SSO → BCP em produção |  | 2026-11-13 → 2026-12-04 (+21d) | 13d → 27d |  |  |
| 31 | Configurar redirect do Portal B2B para o BCP em produção |  | 2026-11-12 → 2026-12-04 (+22d) | 10d → 25d |  |  |
| 32 | **Marco 3 — API e SKU e Flavors** |  | 2026-11-11 → 2026-11-27 (+16d) | 24d → 35d |  |  |
| 35 | Concluir adequação dos endpoints de SKU e Flavor |  | 2026-11-06 → 2026-11-19 (+13d) | 12d → 21d |  |  |
| 36 | Testar e publicar APIs de SKU e Flavor |  | 2026-11-09 → 2026-11-27 (+18d) | 9d → 22d |  |  |
| 37 | Homologar APIs de SKU e Flavor com a Algar |  | 2026-11-11 → 2026-11-27 (+16d) | 9d → 20d |  |  |
| 38 | Coleta de SKU/recursos não mapeados |  | 2026-11-11 → 2026-11-19 (+8d) | 6d → 12d |  |  |
| 39 | Snapshot |  | 2026-11-11 → 2026-11-19 (+8d) | 6d → 12d |  |  |
| 40 | **Marco 4 — Novas regiões / Coleta / Billing** |  | 2026-11-13 → 2026-11-27 (+14d) | 28d → 37d | 32% → 28% |  |
| 45 | Definir publicação e acesso da calculadora de consumo | 2026-10-13 A |  |  | 0% → 25% |  |
| 48 | Liberar firewall e acesso externo conforme domínio e local de hospedagem | 2026-10-21 A |  |  | 0% → 25% |  |
| 49 | Começar coleta Porto Alegre |  | 2026-11-13 → 2026-11-27 (+14d) | 16d → 25d |  |  |
| 51 | Começar coleta Fortaleza |  | 2026-11-13 → 2026-11-27 (+14d) | 16d → 25d |  |  |
| 53 | Apresentar calculadora ao time do Portal | 2026-10-29 A | 2026-11-06 → 2026-11-12 (+6d) | 6d → 10d | 0% → 25% |  |
| 54 | Liberar acesso externo ao MySQL para a BC Data API |  | 2026-11-12 → 2026-11-19 (+7d) | 10d → 15d | 50% → 75% |  |
| 55 | Validar acessos e endpoints das regiões Canonical | 2026-10-30 A → 2026-10-30 |  |  | 50% → 0% |  |
| 56 | Validar endpoint São Paulo DR; |  | 2026-11-04 → 2026-11-19 (+15d) | 3d → 14d |  |  |
| 57 | Validar endpoint São Paulo; |  | 2026-11-04 → 2026-11-19 (+15d) | 3d → 14d |  |  |
| 58 | Validar Endpoint Porto Alegre; | 2026-10-30 A → 2026-10-30 | 2026-11-04 → 2026-11-19 (+15d) | 3d → 14d | 75% → 0% |  |
| 59 | Validar endpoint Fortaleza; | 2026-10-30 A → 2026-10-30 | 2026-11-04 → 2026-11-19 (+15d) | 3d → 14d | 75% → 0% |  |
| 60 | Validar conectividade BC Data API → MySQL | 2026-11-04 → 2026-11-23 (+19d) | 2026-11-06 → 2026-11-27 (+21d) | 3d → 5d |  | constraint start no earlier than 2026-11-04 → start no earlier than 2026-11-23 |

## Version 15 (saved 2026-11-17)

Note of the change: Data da última atualização (17/11/2026 20:32) [CF-Pages-Skip]

Last finish stays 2026-12-04. Complete tasks 22 → 23.

Changed:

| ID | Task | Start | Finish | Complete |
| --- | --- | --- | --- | --- |
| 40 | **Marco 4 — Novas regiões / Coleta / Billing** |  |  | 28% → 35% |
| 53 | Apresentar calculadora ao time do Portal |  | 2026-11-12 A | 25% → 100% |
| 58 | Validar Endpoint Porto Alegre; | 2026-10-30 A |  | 0% → 75% |

## Version 16 (saved 2026-11-25)

Note of the change: Data da última atualização (25/11/2026 20:32) [CF-Pages-Skip]

Last finish stays 2026-12-04. Complete tasks 23 → 32.

Changed:

| ID | Task | Start | Finish | Complete |
| --- | --- | --- | --- | --- |
| 9 | **Marco 1 — Fase 1 — SSO / Identity Hub / Portal B2B** |  |  | 62% → 72% |
| 10 | Concluir a configuração de OpenID Connect, Keycloak e Keystone e trocar o acesso de sandbox pelo fluxo produtivo |  | 2026-11-13 A | 50% → 100% |
| 25 | Documentar e alinhar virada para produção | 2026-11-11 A | 2026-11-27 A | 0% → 100% |
| 32 | **Marco 3 — API e SKU e Flavors** |  |  | 43% → 64% |
| 38 | Coleta de SKU/recursos não mapeados |  | 2026-11-19 A | 50% → 100% |
| 39 | Snapshot | 2026-11-04 A | 2026-11-19 A | 0% → 100% |
| 40 | **Marco 4 — Novas regiões / Coleta / Billing** |  |  | 35% → 70% |
| 43 | Validar regras de cobrança das novas regiões | 2026-10-07 A | 2026-11-11 A | 0% → 100% |
| 45 | Definir publicação e acesso da calculadora de consumo |  | 2026-11-12 A | 25% → 100% |
| 46 | Validar certificado e HTTPS do ambiente produtivo | 2026-10-15 A |  | 0% → 75% |
| 49 | Começar coleta Porto Alegre | 2026-10-22 A |  | 0% → 50% |
| 50 | Deploy + Validação | 2026-10-22 A |  | 0% → 50% |
| 51 | Começar coleta Fortaleza | 2026-10-22 A |  | 0% → 50% |
| 52 | Deploy + Validação | 2026-10-22 A |  | 0% → 50% |
| 54 | Liberar acesso externo ao MySQL para a BC Data API |  | 2026-11-19 A | 75% → 100% |
| 55 | Validar acessos e endpoints das regiões Canonical | 2026-10-30 A |  | 0% → 50% |
| 58 | Validar Endpoint Porto Alegre; |  | 2026-11-19 A | 75% → 100% |
| 59 | Validar endpoint Fortaleza; | 2026-10-30 A | 2026-11-19 A | 0% → 100% |
| 60 | Validar conectividade BC Data API → MySQL | 2026-11-23 A |  | 0% → 50% |

## Version 17 (saved 2026-11-26)

Note of the change: Data da última atualização (26/11/2026 20:32) [CF-Pages-Skip]

Last finish stays 2026-12-04. Complete tasks 32 → 36.

Changed:

| ID | Task | Start | Finish | Complete |
| --- | --- | --- | --- | --- |
| 40 | **Marco 4 — Novas regiões / Coleta / Billing** |  |  | 70% → 81% |
| 46 | Validar certificado e HTTPS do ambiente produtivo |  | 2026-11-06 A | 75% → 100% |
| 49 | Começar coleta Porto Alegre |  | 2026-11-27 A | 50% → 100% |
| 51 | Começar coleta Fortaleza |  | 2026-11-27 A | 50% → 100% |
| 57 | Validar endpoint São Paulo; | 2026-10-30 A | 2026-11-19 A | 0% → 100% |
